# plan

Schedule from MS Project, 2010-06-15 to 2010-09-01, status date 2010-06-21, A marks actual dates.

## Calendars

- Standard: Mon-Fri 08:00-12:00, 13:00-17:00; Sat-Sun off.

## Resources

| Resource |
| --- |
| CN |

## Schedule

| ID | Task | Type | Duration | Start | Finish | Predecessors | Complete | Remaining | Total slack | Free slack | Constraint | Resources | Work | Actual work |
| --- | --- | --- | --- | --- | --- | --- | --- | --- | --- | --- | --- | --- | --- | --- |
| 1 | Set up of source control and continuous integration |  | 1d | 2010-06-15 A | 2010-06-15 |  | 95% | 0.05d | 2.25d | 0d |  | CN | 8h | 7.6h |
| 2 | Implementation of rule engine |  | 1w | 2010-06-16 A | 2010-06-22 | 1 | 85% | 0.15w | 1d | 0d |  | CN | 40h | 34h |
| 3 | Front end for tagger |  | 3d | 2010-06-23 A | 2010-06-25 | 2 | 65% | 1.05d | 1d | 0d |  | CN | 24h | 15.6h |
| 4 | Creation of rule set for recognition |  | 2w | 2010-06-28 | 2010-07-09 | 2 |  |  | 31d | 30d |  | CN | 80h |  |
| 5 | Creation of rule set for normalisation |  | 2w | 2010-07-12 | 2010-07-23 | 2 |  |  | 21d | 20d |  | CN | 80h |  |
| 6 | Implementation of an SVM approach |  | 2w | 2010-07-26 | 2010-08-06 | 3 |  |  | 11d | 10d |  | CN | 80h |  |
| 7 | Implementation of a rule learning approach |  | 2w | 2010-08-09 | 2010-08-20 | 3 |  |  | 1d | 0d |  | CN | 80h |  |
| 8 | Evaluation of system against TERN data |  | 3d | 2010-08-23 | 2010-08-25 | 4, 5, 6, 7 |  |  | 4d |  |  | CN | 24h |  |
| 9 | Evaluation of system against TempEval-2 data |  | 3d | 2010-08-26 | 2010-08-30 | 4, 5, 6, 7 |  |  | 1d |  |  | CN | 24h |  |
| 10 | Hand in | milestone | 0d | 2010-09-01 | 2010-09-01 |  |  |  | 0d |  | start no earlier than 2010-09-01 |  |  |  |
